# Gp-DELTA(A)

Schedule from MS Project, 2020-08-13 to 2021-06-14, A marks actual dates.

## Calendars

- Standard: Mon-Fri 08:00-12:00, 13:00-17:00; Sat-Sun off.

## Resources

| Resource | Rate | Cost per use |
| --- | --- | --- |
| Capt Tanha |  |  |
| Capt Nusrat |  |  |
| Capt Muhtasim |  |  |
| Capt Masud |  |  |
| Bread Board (Normal) | 90 | 90 |
| Bread Board (Small) | 75 | 75 |
| RFID RC 522 | 180 | 180 |
| 12 volt Door Lock (Small) | 500 | 2000 |
| 12 Volt Door Lock | 550 | 550 |
| 3.7V 2200mAH Battery | 250 | 500 |
| 2 Channel Relay 5V | 140 | 280 |
| 2 Channel Relay 5V | 240 | 480 |
| Jumper Wires | 60 | 180 |
| 12V 2A Adapter | 120 | 120 |
| 3.3v IC | 30 | 180 |
| 7805 IC | 20 | 120 |
| 5V Buzzer | 15 | 30 |
| OLED 0.96 Display | 350 | 350 |
| RGB LED 5M | 10 | 50 |
| R307 Fingerprint Module | 1600 | 1600 |
| NodeMCU | 400 | 800 |
| Switch | 2 | 12 |
| 10 K Pot switch | 15 |  |

## Schedule

| ID | WBS | Task | Type | Duration | Start | Finish | Complete | Remaining | Total slack | Resources | Work | Actual work |
| --- | --- | --- | --- | --- | --- | --- | --- | --- | --- | --- | --- | --- |
| 1 | 1 | **UNIT KOTE KEY MANAGEMENT SYSTEM** |  | 218d? | 2020-08-13 A | 2021-06-14 | 84% | 33.94d? | 0d |  | 7304h | 6094.4h |
| 2 | 1.1 | **Initialization** |  | 17d? | 2020-08-13 A | 2020-09-04 A | 100% |  |  |  | 928h | 928h |
| 3 | 1.1.1 | Group Discussion | manual | 6d | 2020-08-13 A | 2020-08-20 A | 100% |  |  | Capt Masud; Capt Muhtasim; Capt Nusrat; Capt Tanha | 192h | 192h |
| 4 | 1.1.2 | Brain Storming | manual | 6d | 2020-08-13 A | 2020-08-20 A | 100% |  |  | Capt Masud; Capt Muhtasim; Capt Nusrat; Capt Tanha | 192h | 192h |
| 5 | 1.1.3 | Idea collection | manual | 5d | 2020-08-16 A | 2020-08-20 A | 100% |  |  | Capt Masud; Capt Muhtasim; Capt Nusrat; Capt Tanha | 160h | 160h |
| 6 | 1.1.4 | Idea Approval | manual | 1d | 2020-08-20 A | 2020-08-20 A | 100% |  |  | Capt Masud; Capt Muhtasim; Capt Nusrat; Capt Tanha | 32h | 32h |
| 7 | 1.1.5 | Project Proposal | manual | 11d | 2020-08-20 A | 2020-09-03 A | 100% |  |  | Capt Masud; Capt Muhtasim; Capt Nusrat; Capt Tanha | 352h | 352h |
| 8 | 1.1.6 | Project Approval | manual | 1d | 2020-09-04 A | 2020-09-04 A | 100% |  |  |  |  |  |
| 9 | 1.2 | **Plan** |  | 66d? | 2020-09-08 A | 2020-12-08 | 99% | 0.46d? |  |  | 3024h | 3008.8h |
| 10 | 1.2.1 | **First Phase** |  | 25d? | 2020-09-08 A | 2020-10-12 A | 100% |  |  |  | 1120h | 1120h |
| 11 | 1.2.1.1 | Group Study About Project | manual | 6d | 2020-09-08 A | 2020-09-15 A | 100% |  |  | Capt Masud; Capt Muhtasim; Capt Nusrat; Capt Tanha | 192h | 192h |
| 12 | 1.2.1.2 | Feature Comparison and Evaluation | manual | 6d | 2020-09-15 A | 2020-09-22 A | 100% |  |  | Capt Masud; Capt Muhtasim; Capt Nusrat; Capt Tanha | 192h | 192h |
| 13 | 1.2.1.3 | Actual user effectiveness | manual | 6d | 2020-09-22 A | 2020-09-29 A | 100% |  |  | Capt Masud; Capt Muhtasim; Capt Nusrat; Capt Tanha | 192h | 192h |
| 14 | 1.2.1.4 | Budget Discussion | manual | 6d | 2020-09-22 A | 2020-09-29 A | 100% |  |  | Capt Masud; Capt Muhtasim; Capt Nusrat; Capt Tanha | 192h | 192h |
| 15 | 1.2.1.5 | Initializing Approach | manual | 6d | 2020-09-29 A | 2020-10-06 A | 100% |  |  | Capt Masud; Capt Muhtasim; Capt Nusrat; Capt Tanha | 192h | 192h |
| 16 | 1.2.1.6 | First Phase Finalization | manual | 5d | 2020-10-06 A | 2020-10-12 A | 100% |  |  | Capt Masud; Capt Muhtasim; Capt Nusrat; Capt Tanha | 160h | 160h |
| 17 | 1.2.2 | **Second Phase** |  | 42d? | 2020-10-12 A | 2020-12-08 | 99% | 0.44d? |  |  | 1904h | 1888.8h |
| 18 | 1.2.2.1 | Draft software Requirements | manual | 6d | 2020-10-12 A | 2020-10-19 A | 100% |  |  | Capt Masud; Capt Muhtasim; Capt Nusrat; Capt Tanha | 192h | 192h |
| 19 | 1.2.2.2 | Obtain Necessary Resources | manual | 6d | 2020-10-19 A | 2020-10-26 A | 100% |  |  | Capt Masud; Capt Muhtasim; Capt Nusrat; Capt Tanha | 192h | 192h |
| 20 | 1.2.2.3 | UI module customization | manual | 11d | 2020-10-26 A | 2020-11-09 A | 100% |  |  | Capt Masud; Capt Muhtasim | 176h | 176h |
| 21 | 1.2.2.4 | Users feedback | manual | 11d | 2020-11-02 A | 2020-11-16 | 95% | 0.55d |  | Capt Nusrat; Capt Tanha | 176h | 167.2h |
| 22 | 1.2.2.5 | Presentation | manual | 3d | 2020-11-23 A | 2020-11-25 A | 100% |  |  | Capt Nusrat; Capt Tanha | 48h | 48h |
| 23 | 1.2.2.6 | Necessary Correction | manual | 4d | 2020-10-26 A | 2020-10-29 | 95% | 0.2d |  | Capt Masud; Capt Muhtasim; Capt Nusrat; Capt Tanha | 128h | 121.6h |
| 24 | 1.2.2.7 | Miscellaneous | manual | 3d | 2020-10-29 A | 2020-11-01 A | 100% |  |  | Capt Masud; Capt Muhtasim; Capt Nusrat; Capt Tanha | 96h | 96h |
| 25 | 1.2.2.8 | Second Phase Finalization | manual | 28d | 2020-11-01 A | 2020-12-08 A | 100% |  |  | Capt Masud; Capt Muhtasim; Capt Nusrat; Capt Tanha | 896h | 896h |

| ID | WBS | Task | Type | Duration | Start | Finish | Complete | Remaining | Resources | Work | Actual work |
| --- | --- | --- | --- | --- | --- | --- | --- | --- | --- | --- | --- |
| 26 | 1.3 | **Execution** |  | 73d? | 2021-03-04 A | 2021-06-14 | 71% | 20.84d? |  | 3320h | 2157.6h |
| 27 | 1.3.1 | **Design** |  | 38d | 2021-03-04 A | 2021-04-26 | 90% | 3.62d |  | 1008h | 880h |
| 28 | 1.3.1.1 | Analyze Software and Hardware specification | manual | 2d | 2021-03-04 A | 2021-03-05 A | 100% |  | Capt Masud; Capt Muhtasim; Capt Nusrat; Capt Tanha | 64h | 64h |
| 29 | 1.3.1.2 | UI development (25%) | manual | 2d | 2021-03-05 A | 2021-03-08 A | 100% |  | Capt Masud; Capt Tanha | 32h | 32h |
| 30 | 1.3.1.3 | UI development (60%)& Initial Hardware Setup | manual | 6d | 2021-03-08 A | 2021-03-15 A | 100% |  | Capt Masud; Capt Muhtasim; Capt Tanha | 144h | 144h |
| 31 | 1.3.1.4 | Combined SW& HW Update -1 | manual | 16d | 2021-03-15 A | 2021-04-05 A | 100% |  | Capt Masud; Capt Muhtasim | 256h | 256h |
| 32 | 1.3.1.5 | Approval | manual | 6d | 2021-04-05 A | 2021-04-12 | 75% | 1.5d | Capt Masud; Capt Muhtasim; Capt Nusrat; Capt Tanha | 192h | 144h |
| 33 | 1.3.1.6 | Design completion | manual | 10d | 2021-04-13 A | 2021-04-26 | 75% | 2.5d | Capt Masud; Capt Muhtasim; Capt Nusrat; Capt Tanha | 320h | 240h |
| 34 | 1.3.2 | **Development** |  | 28d? | 2021-03-26 A | 2021-05-04 | 88% | 3.5d? |  | 616h | 512h |
| 35 | 1.3.2.1 | Back-end Analysis | manual | 4d | 2021-03-26 A | 2021-03-31 A | 100% |  | Capt Nusrat; Capt Tanha | 64h | 64h |
| 36 | 1.3.2.2 | Third Party Data Analysis | manual | 6d | 2021-03-31 A | 2021-04-07 | 75% | 1.5d | Capt Nusrat; Capt Tanha | 96h | 72h |
| 37 | 1.3.2.3 | Distribution of Work | manual | 1d | 2021-04-08 A | 2021-04-08 A | 100% |  | Capt Masud; Capt Muhtasim; Capt Nusrat; Capt Tanha | 32h | 32h |
| 38 | 1.3.2.4 | Forming Up Back End | manual | 11d | 2021-04-08 A | 2021-04-22 A | 100% |  | Capt Nusrat; Capt Tanha | 176h | 176h |
| 39 | 1.3.2.5 | Necessary Correction | manual | 6d | 2021-04-22 A | 2021-04-29 | 75% | 1.5d | Capt Nusrat; Capt Tanha; Capt Masud; Capt Muhtasim | 120h | 72h |
| 40 | 1.3.2.6 | Development Completion | manual | 4d | 2021-04-29 A | 2021-05-04 | 75% | 1d | Capt Masud; Capt Muhtasim; Capt Nusrat; Capt Tanha | 128h | 96h |
| 41 | 1.3.3 | **Documentation** |  | 73d | 2021-03-04 A | 2021-06-14 | 55% | 33.13d |  | 1440h | 765.6h |
| 42 | 1.3.3.1 | Preparation of Documents | manual | 6d | 2021-03-04 A | 2021-03-11 A | 100% |  | Capt Nusrat; Capt Tanha | 96h | 96h |
| 43 | 1.3.3.2 | Analyze all user documentation | manual | 33d | 2021-03-11 A | 2021-04-26 | 95% | 1.65d | Capt Masud; Capt Muhtasim | 528h | 501.6h |
| 44 | 1.3.3.3 | Miscellaneous | manual | 5d | 2021-04-27 A | 2021-05-03 | 75% | 1.25d | Capt Masud; Capt Muhtasim; Capt Nusrat; Capt Tanha | 160h | 120h |
| 45 | 1.3.3.4 | Documentation Completion | manual | 2d | 2021-05-03 A | 2021-05-04 | 75% | 0.5d | Capt Masud; Capt Muhtasim; Capt Nusrat; Capt Tanha | 64h | 48h |
| 46 | 1.3.3.5 | **Test/Validation** |  | 29d | 2021-05-05 | 2021-06-14 |  |  |  | 592h |  |
| 47 | 1.3.3.5.1 | Trial Plan | manual | 1d | 2021-05-05 | 2021-05-05 |  |  | Capt Masud; Capt Muhtasim | 16h |  |
| 48 | 1.3.3.5.2 | Trial With Database | manual | 6d | 2021-05-06 | 2021-05-13 |  |  | Capt Nusrat; Capt Tanha | 96h |  |
| 49 | 1.3.3.5.3 | Trial Matching Keyword from Server | manual | 4d | 2021-05-13 | 2021-05-18 |  |  | Capt Nusrat; Capt Tanha | 64h |  |
| 50 | 1.3.3.5.4 | Testing Server Response | manual | 16d | 2021-05-18 | 2021-06-08 |  |  | Capt Nusrat; Capt Tanha | 256h |  |
| 51 | 1.3.3.5.5 | Test Completion | manual | 5d | 2021-06-08 | 2021-06-14 |  |  | Capt Masud; Capt Muhtasim; Capt Nusrat; Capt Tanha | 160h |  |

| ID | WBS | Task | Type | Duration | Start | Finish | Total slack | Resources | Work |
| --- | --- | --- | --- | --- | --- | --- | --- | --- | --- |
| 52 | 1.3.4 | **Training** |  | 0d | 2021-03-04 | 2021-03-04 | 73d |  | 128h |
| 53 | 1.3.4.1 | Develop Training Planning | manual | 1d | 2021-05-03 | 2021-05-03 |  | Capt Masud; Capt Muhtasim | 16h |
| 54 | 1.3.4.2 | Interface Orientation | manual | 1d | 2021-05-03 | 2021-05-03 |  | Capt Masud; Capt Muhtasim | 16h |
| 55 | 1.3.4.3 | Server Load Test | manual | 1d | 2021-05-03 | 2021-05-03 |  | Capt Masud; Capt Muhtasim; Capt Nusrat; Capt Tanha | 32h |
| 56 | 1.3.4.4 | Conduct Exercise | manual | 1d | 2021-05-03 | 2021-05-03 |  | Capt Masud; Capt Muhtasim; Capt Nusrat; Capt Tanha | 32h |
| 57 | 1.3.4.5 | Product Release | manual | 1d | 2021-05-03 | 2021-05-03 |  | Capt Masud; Capt Muhtasim; Capt Nusrat; Capt Tanha | 32h |
| 58 | 1.3.5 | **Final Review** |  | 0d | 2021-03-04 | 2021-03-04 | 73d |  | 128h |
| 59 | 1.3.5.1 | Review with Users | manual | 1d | 2021-05-03 | 2021-05-03 |  | Capt Masud; Capt Muhtasim; Capt Nusrat; Capt Tanha | 32h |
| 60 | 1.3.5.2 | Lessons Learnt | manual | 1d | 2021-05-03 | 2021-05-03 |  | Capt Masud; Capt Muhtasim; Capt Nusrat; Capt Tanha | 32h |
| 61 | 1.3.5.3 | Maintenance Team | manual | 1d | 2021-05-03 | 2021-05-03 |  | Capt Masud; Capt Muhtasim; Capt Nusrat; Capt Tanha | 32h |
| 62 | 1.3.5.4 | Review Complete | manual | 1d | 2021-05-03 | 2021-05-03 |  | Capt Masud; Capt Muhtasim; Capt Nusrat; Capt Tanha | 32h |
| 63 | 1.4 | **Closing** |  | 2d | 2021-06-12 | 2021-06-14 |  |  | 32h |
| 64 | 1.4.1 | Closing presentation | manual | 1d | 2021-06-14 | 2021-06-14 |  | Capt Masud; Capt Muhtasim; Capt Nusrat; Capt Tanha | 32h |
